Schedule from MS Project, 2010-05-20 to 2010-10-21, A marks actual dates.

## Calendars

- Standard: Mon-Fri 08:00-12:00, 13:00-17:00; Sat-Sun off. Exceptions (off unless hours are given): 2010-05-31, 2010-07-05, 2010-09-06.

## Resources

| Resource |
| --- |
| Bediako |
| Satish |
| Prasad |
| All |
| Vijay |
| John |
| Greg |
| Dan |
| Santhosh |
| Satisj |
| Sree |
| Satich |
| Santosh |
| Vijat |

## Schedule

| ID | WBS | Task | Type | Duration | Start | Finish | Predecessors | Complete | Remaining | Total slack | Free slack | Constraint | Resources | Work | Actual work | Text1 |
| --- | --- | --- | --- | --- | --- | --- | --- | --- | --- | --- | --- | --- | --- | --- | --- | --- |
| 2 | 1 | **Project management and set-up tasks** |  | 108d | 2010-05-20 A | 2010-10-21 |  | 67% | 36d | 0d |  |  |  | 560h | 456h |  |
| 3 | 1.1 | **Inception** |  | 21d | 2010-05-20 A | 2010-06-18 A |  | 100% |  |  |  |  |  | 168h | 168h |  |
| 4 | 1.1.1 | Project awarded | milestone | 0d | 2010-05-20 A | 2010-05-20 A |  | 100% |  |  |  | start no earlier than 2010-05-20 |  |  |  |  |
| 5 | 1.1.2 | Kickoff meeting |  | 1d | 2010-05-28 A | 2010-05-28 A |  | 100% |  |  |  | start no earlier than 2010-05-28 |  |  |  |  |
| 6 | 1.1.3 | Draft Project Management Plan |  | 10d | 2010-06-07 A | 2010-06-18 A |  | 100% |  |  |  | start no earlier than 2010-06-07 | Greg | 80h | 80h |  |
| 7 | 1.1.4 | **New member ramp-up & SDK training** |  | 6d | 2010-06-07 A | 2010-06-14 A |  | 100% |  |  |  |  |  | 88h | 88h |  |
| 8 | 1.1.4.1 | Self study |  | 5d | 2010-06-07 A | 2010-06-11 A |  | 100% |  |  |  | start no earlier than 2010-06-07 | Bediako; John | 80h | 80h |  |
| 9 | 1.1.4.2 | SDK training class |  | 1d | 2010-06-14 A | 2010-06-14 A |  | 100% |  |  |  | start no earlier than 2010-06-14 | All | 8h | 8h |  |
| 10 | 1.2 | **Elaboration** |  | 17d | 2010-06-21 A | 2010-07-14 |  | 63% | 6.3d | 70d |  |  |  | 352h | 272h |  |
| 11 | 1.2.1 | Review and deliver Project Management Plan |  | 5d | 2010-06-21 A | 2010-06-25 A |  | 100% |  |  |  | start no earlier than 2010-06-21 | Greg; Satish | 80h | 80h |  |
| 12 | 1.2.2 | Scope document (charter) |  | 12d | 2010-06-21 A | 2010-07-07 A |  | 100% |  |  |  | start no earlier than 2010-06-21 | Greg; Satish | 192h | 192h |  |
| 13 | 1.2.3 | Design Review Package - note: will not be 10 days before C1 |  | 10d | 2010-06-30 | 2010-07-14 | 12FF, 59FF, 98FF |  |  | 70d |  |  | All | 80h |  |  |
| 14 | 1.3 | **Transition** |  | 5d | 2010-10-01 | 2010-10-07 |  |  |  | 0d |  | start no earlier than 2010-09-27 |  |  |  |  |
| 15 | 1.3.1 | Project Summary Report |  | 5d | 2010-10-01 | 2010-10-07 | 85 |  |  | -1d | 0d | finish no later than 2010-10-07 |  |  |  |  |
| 16 | 1.4 | **Monthly status reports** |  | 86d | 2010-06-10 A | 2010-10-11 |  | 40% | 51.6d | 8d |  |  |  | 40h | 16h |  |
| 17 | 1.4.1 | Monthly status report 1 |  | 1d | 2010-06-10 A | 2010-06-10 A |  | 100% |  |  |  | start no earlier than 2010-06-10 | Satish | 8h | 8h |  |
| 18 | 1.4.2 | Monthly status report 2 |  | 1d | 2010-07-12 A | 2010-07-12 A |  | 100% |  |  |  | start no earlier than 2010-07-10 | Greg | 8h | 8h |  |
| 19 | 1.4.3 | Monthly status report 3 |  | 1d | 2010-08-10 | 2010-08-10 |  |  |  | 51d |  | start no earlier than 2010-08-10 | Greg | 8h |  |  |
| 20 | 1.4.4 | Monthly status report 4 |  | 1d | 2010-09-10 | 2010-09-10 |  |  |  | 29d |  | start no earlier than 2010-09-10 | Greg | 8h |  |  |
| 21 | 1.4.5 | Monthly status report 5 |  | 1d | 2010-10-11 | 2010-10-11 |  |  |  | 8d |  | start no earlier than 2010-10-10 | Greg | 8h |  |  |
| 22 | 1.5 | Project Completion | milestone | 0d | 2010-10-21 | 2010-10-21 |  |  |  | 0d |  | must finish on 2010-10-21 |  |  |  |  |
| 24 | 2 | **SDK 4.3 release** |  | 19d | 2010-05-28 A | 2010-06-24 |  | 96% | 0.81d | 83d |  |  |  | 576h | 576h | 1,2,10 |
| 25 | 2.1 | QA support |  | 6d | 2010-05-28 A | 2010-06-07 A |  | 100% |  |  |  | start no earlier than 2010-05-28 | Santhosh; Vijay [75%] | 96h | 96h |  |
| 26 | 2.2 | Unit testing |  | 6d | 2010-06-02 A | 2010-06-09 A |  | 100% |  |  |  | start no earlier than 2010-06-02 | John [50%]; Vijay [25%] | 96h | 96h |  |

| ID | WBS | Task | Type | Duration | Start | Finish | Predecessors | Complete | Remaining | Total slack | Constraint | Resources | Work | Actual work |
| --- | --- | --- | --- | --- | --- | --- | --- | --- | --- | --- | --- | --- | --- | --- |
| 27 | 2.3 | **Update guides** |  | 5d | 2010-06-01 A | 2010-06-07 A |  | 100% |  |  |  |  | 40h | 40h |
| 28 | 2.3.1 | Workbench Users Guide |  | 1d | 2010-06-01 A | 2010-06-01 A |  | 100% |  |  | start no earlier than 2010-06-01 | Dan | 8h | 8h |
| 29 | 2.3.2 | SDK Programmers Guide |  | 1d | 2010-06-02 A | 2010-06-02 A | 28 | 100% |  |  |  | Dan | 8h | 8h |
| 30 | 2.3.3 | UML Modeling Guide |  | 1d | 2010-06-03 A | 2010-06-03 A | 29 | 100% |  |  |  | Dan | 8h | 8h |
| 31 | 2.3.4 | Object Relational Mapping Guide |  | 1d | 2010-06-04 A | 2010-06-04 A | 30 | 100% |  |  |  | Dan | 8h | 8h |
| 32 | 2.3.5 | How To Use SDK Guide |  | 1d | 2010-06-07 A | 2010-06-07 A | 31 | 100% |  |  |  | Dan | 8h | 8h |
| 33 | 2.4 | **Update documentation** |  | 10d | 2010-06-07 A | 2010-06-18 A |  | 100% |  |  |  |  | 160h | 160h |
| 34 | 2.4.1 | ISO Common Architectural Overview |  | 2d | 2010-06-07 A | 2010-06-08 A |  | 100% |  |  | start no earlier than 2010-06-07 | Prasad; Dan [50%] | 32h | 32h |
| 35 | 2.4.2 | SDK release notes |  | 2d | 2010-06-09 A | 2010-06-10 A | 34 | 100% |  |  |  | Prasad; Dan [50%] | 32h | 32h |
| 36 | 2.4.3 | Workbench release notes |  | 2d | 2010-06-11 A | 2010-06-14 A | 35 | 100% |  |  |  | Prasad; Dan [50%] | 32h | 32h |
| 37 | 2.4.4 | ISO Common release notes |  | 1d | 2010-06-15 A | 2010-06-15 A | 36 | 100% |  |  |  | Prasad; Dan [50%] | 16h | 16h |
| 38 | 2.4.5 | SDK:Example/ISOExample readme |  | 1d | 2010-06-16 A | 2010-06-16 A | 37 | 100% |  |  |  | Prasad; Dan [50%] | 16h | 16h |
| 39 | 2.4.6 | Workbench readme |  | 1d | 2010-06-17 A | 2010-06-17 A | 38 | 100% |  |  |  | Prasad; Dan [50%] | 16h | 16h |
| 40 | 2.4.7 | ISO Common readme |  | 1d | 2010-06-18 A | 2010-06-18 A | 39 | 100% |  |  |  | Prasad; Dan [50%] | 16h | 16h |
| 41 | 2.5 | Release preparation (gforge, download center, etc.) |  | 10d | 2010-06-07 A | 2010-06-18 A |  | 100% |  |  | start no earlier than 2010-06-07 | Dan [50%] | 80h | 80h |
| 42 | 2.6 | Workbench deployment, release packaging, readme |  | 3d | 2010-06-11 A | 2010-06-15 A |  | 100% |  |  | start no earlier than 2010-06-11 | Santhosh | 24h | 24h |
| 43 | 2.7 | User acceptance testing |  | 5d | 2010-06-14 A | 2010-06-18 A |  | 100% |  |  | start no earlier than 2010-06-14 | Satish; Sree | 80h | 80h |
| 44 | 2.8 | Release ready | milestone | 0d | 2010-06-21 A | 2010-06-21 A |  | 100% |  |  | start no earlier than 2010-06-21 |  |  |  |
| 45 | 2.9 | Release announcement | milestone | 0d | 2010-06-22 A | 2010-06-22 A |  | 100% |  |  | start no earlier than 2010-06-22 |  |  |  |
| 46 | 2.10 | Software Code Base (4.3) |  | 1d | 2010-06-24 | 2010-06-24 | 44FS+3d |  |  | 83d | start no earlier than 2010-06-15 |  |  |  |
| 47 | 2.11 | Deployment Package (4.3) |  | 1d | 2010-06-24 | 2010-06-24 | 44FS+3d |  |  | 83d | start no earlier than 2010-06-15 |  |  |  |
| 49 | 3 | **ISO 21090 Java library 2.2** |  | 79d | 2010-06-21 A | 2010-10-11 |  | 23% | 60.63d | 8d |  |  | 640h | 160h |
| 50 | 3.1 | **Elaboration** |  | 10d | 2010-06-21 A | 2010-07-02 A |  | 100% |  |  | start no earlier than 2010-06-21 |  | 80h | 80h |
| 51 | 3.1.1 | **E1 - Sprint 1** |  | 10d | 2010-06-21 A | 2010-07-02 A |  | 100% |  |  |  |  | 80h | 80h |
| 52 | 3.1.1.1 | **Requirements and Design Specifications** |  | 10d | 2010-06-21 A | 2010-07-02 A |  | 100% |  |  |  |  | 80h | 80h |
| 53 | 3.1.1.1.1 | GAP_Analysis_Iso21090.doc |  | 4d | 2010-06-21 A | 2010-06-24 A |  | 100% |  |  |  | Vijay | 32h | 32h |
| 54 | 3.1.1.1.2 | Design analysis |  | 6d | 2010-06-25 A | 2010-07-02 A | 53 | 100% |  |  |  | Vijay | 48h | 48h |

| ID | WBS | Task | Type | Duration | Start | Finish | Predecessors | Complete | Remaining | Total slack | Free slack | Constraint | Resources | Work | Actual work |
| --- | --- | --- | --- | --- | --- | --- | --- | --- | --- | --- | --- | --- | --- | --- | --- |
| 55 | 3.2 | **Construction** |  | 58d | 2010-07-06 A | 2010-09-24 |  | 15% | 49.34d | 19d |  |  |  | 560h | 80h |
| 56 | 3.2.1 | **C1- Sprint 2** |  | 19d | 2010-07-06 A | 2010-07-30 |  | 53% | 9d | 58d |  | start no earlier than 2010-07-06 |  | 152h | 80h |
| 57 | 3.2.1.1 | Finalized requirements from PODS/COPPA | milestone | 0d | 2010-07-06 | 2010-07-06 | 54 |  |  | 68d | 0d |  |  |  |  |
| 58 | 3.2.1.2 | **Requirements and Design Specification (cont.)** |  | 7d | 2010-07-06 A | 2010-07-14 A | 57 | 100% |  |  |  |  |  | 56h | 56h |
| 59 | 3.2.1.2.1 | ISO 21090 Common Library version 2.2 Design.doc |  | 7d | 2010-07-06 A | 2010-07-14 A |  | 100% |  |  |  | start no earlier than 2010-07-06 | Vijay | 56h | 56h |
| 60 | 3.2.1.3 | [Add data types for PODS/COPPA if required] | milestone | 0d | 2010-07-06 | 2010-07-06 | 57 |  |  | 68d | 7d | start no earlier than 2010-06-28 |  |  |  |
| 61 | 3.2.1.4 | Java API expansion implementation |  | 6d | 2010-07-15 A | 2010-07-22 | 60, 59 | 50% | 3d | 58d | 0d |  | Vijay | 48h | 24h |
| 62 | 3.2.1.5 | JAXB Transformers |  | 4d | 2010-07-23 | 2010-07-28 | 61 |  |  | 58d | 0d | start no earlier than 2010-07-21 | Vijay | 32h |  |
| 63 | 3.2.1.6 | Sprint C1 Integration |  | 2d | 2010-07-29 | 2010-07-30 | 62 |  |  | 58d |  |  | Vijay | 16h |  |
| 64 | 3.2.2 | **C2 - Sprint 3** |  | 21d | 2010-08-02 | 2010-08-30 |  |  |  | 37d |  | start no earlier than 2010-08-02 |  | 176h |  |
| 65 | 3.2.2.1 | Revisit req doc with regard to data types successfully implemented |  | 1d | 2010-08-02 | 2010-08-02 |  |  |  | 45d | 0d | start no earlier than 2010-06-28 | Vijay | 8h |  |
| 66 | 3.2.2.2 | Junit test cases |  | 6d | 2010-08-03 | 2010-08-10 | 65 |  |  | 45d | 8d |  | Vijay | 48h |  |
| 67 | 3.2.2.3 | PIM Document update |  | 3d | 2010-08-11 | 2010-08-13 | 65 |  |  | 48d |  | start no earlier than 2010-08-11 | Vijay | 24h |  |
| 68 | 3.2.2.4 | Finalized design documents to QA | milestone | 0d | 2010-08-09 | 2010-08-09 |  |  |  | 53d |  | start no earlier than 2010-08-09 |  |  |  |
| 69 | 3.2.2.5 | Test Plan |  | 5d | 2010-08-06 | 2010-08-13 | 71FF |  |  | 49d | 0d |  | Vijay | 40h |  |
| 70 | 3.2.2.6 | Revisit new data types listing and adjust test plan |  | 1d | 2010-08-12 | 2010-08-13 | 69FF |  |  | 49d |  |  | Vijay | 8h |  |
| 71 | 3.2.2.7 | Test Plan Due | milestone | 0d | 2010-08-13 | 2010-08-13 |  |  |  | 49d | 0d | start no earlier than 2010-08-13 |  |  |  |
| 72 | 3.2.2.8 | CI Server |  | 3d | 2010-08-23 | 2010-08-25 | 66 |  |  | 37d | 0d | start no earlier than 2010-08-23 | Vijay | 24h |  |
| 73 | 3.2.2.9 | Sprint C2 Integration |  | 3d | 2010-08-26 | 2010-08-30 | 72 |  |  | 37d |  |  | Vijay | 24h |  |
| 74 | 3.2.3 | **C3 - Sprint 4 (QA)** |  | 19d | 2010-08-30 | 2010-09-24 |  |  |  | -1d | 0d | start no earlier than 2010-08-30 |  | 232h |  |
| 75 | 3.2.3.1 | Code base available for QA | milestone | 0d | 2010-08-30 | 2010-08-30 |  |  |  | 38d |  |  |  |  |  |
| 76 | 3.2.3.2 | QA Support |  | 19d | 2010-08-30 | 2010-09-24 |  |  |  | -1d | 0d |  | All | 152h |  |
| 77 | 3.2.3.3 | **Update documentation** |  | 5d | 2010-08-30 | 2010-09-03 |  |  |  | 13d |  |  |  | 80h |  |
| 78 | 3.2.3.3.1 | ISO Common Architectural Overview |  | 2d | 2010-08-30 | 2010-08-31 |  |  |  | 13d | 0d |  | Vijay; Santhosh | 32h |  |
| 79 | 3.2.3.3.2 | ISO Common release notes |  | 2d | 2010-09-01 | 2010-09-02 | 78 |  |  | 13d | 0d |  | Vijay; Santhosh | 32h |  |
| 80 | 3.2.3.3.3 | ISO Common readme |  | 1d | 2010-09-03 | 2010-09-03 | 79 |  |  | 13d |  |  | Vijay; Santhosh | 16h |  |
| 81 | 3.2.3.4 | Final product documentation to QA | milestone | 0d | 2010-09-20 | 2010-09-20 |  |  |  | 24d |  | start no earlier than 2010-09-20 |  |  |  |
| 82 | 3.2.3.5 | Download Center updates |  | 2d | 2010-09-23 | 2010-09-24 |  |  |  | -1d | 0d | finish no earlier than 2010-09-24 |  |  |  |
| 83 | 3.2.3.6 | QA Complete | milestone | 0d | 2010-09-24 | 2010-09-24 |  |  |  | 20d |  | start no earlier than 2010-09-24 |  |  |  |

| ID | WBS | Task | Type | Duration | Start | Finish | Predecessors | Complete | Remaining | Total slack | Free slack | Constraint | Resources | Work | Actual work | Text1 |
| --- | --- | --- | --- | --- | --- | --- | --- | --- | --- | --- | --- | --- | --- | --- | --- | --- |
| 84 | 3.3 | **Transition** |  | 11d | 2010-09-27 | 2010-10-11 |  |  |  | -1d | 0d |  |  |  |  |  |
| 85 | 3.3.1 | User Acceptance Testing |  | 5d | 2010-09-27 | 2010-10-01 | 76, 77, 82 |  |  | -1d | 0d |  |  |  |  |  |
| 86 | 3.3.2 | (Test Package) |  | 1d | 2010-10-04 | 2010-10-04 | 85 |  |  | 8d | 0d |  |  |  |  |  |
| 87 | 3.3.3 | ISO 21090 Java Library 2.2 Release |  | 1d | 2010-10-05 | 2010-10-05 | 86 |  |  | 8d | 0d |  |  |  |  |  |
| 88 | 3.3.4 | Software Code Base (2.2) |  | 1d | 2010-10-11 | 2010-10-11 | 87FS+3d |  |  | 8d |  |  |  |  |  |  |
| 89 | 3.3.5 | Deployment Package (2.2) |  | 1d | 2010-10-11 | 2010-10-11 | 87FS+3d |  |  | 8d |  |  |  |  |  |  |
| 91 | 4 | **SDK 4.4 release (using 2.1 library, integrated with caGrid 1.4)** |  | 79d | 2010-06-21 A | 2010-10-11 |  | 20% | 63.3d | 8d |  |  |  | 1408h | 284.8h |  |
| 92 | 4.1 | **Elaboration** |  | 10d | 2010-06-21 A | 2010-07-02 A |  | 100% |  |  |  |  |  | 120h | 120h |  |
| 93 | 4.1.1 | **E1 - Sprint 1** |  | 10d | 2010-06-21 A | 2010-07-02 A |  | 100% |  |  |  |  |  | 120h | 120h |  |
| 94 | 4.1.1.1 | Functional Analysis |  | 5d | 2010-06-21 A | 2010-06-25 A |  | 100% |  |  |  | start no earlier than 2010-06-21 | Dan | 40h | 40h | 1-6,8 |
| 95 | 4.1.1.2 | Requirements and Design Specifications |  | 5d | 2010-06-28 A | 2010-07-02 A | 94 | 100% |  |  |  | start no earlier than 2010-06-15 | Dan; Santhosh | 80h | 80h | 1-6,8 |
| 96 | 4.2 | **Construction** |  | 58d | 2010-07-06 A | 2010-09-24 |  | 15% | 49.15d | 19d |  |  |  | 1288h | 164.8h |  |
| 97 | 4.2.1 | **C1- Sprint 2** |  | 19d | 2010-07-06 A | 2010-07-30 |  | 42% | 11.01d | 58d |  | start no earlier than 2010-07-06 |  | 504h | 164.8h |  |
| 98 | 4.2.1.1 | **Requirements and Design specifications (cont)** |  | 4d | 2010-07-06 A | 2010-07-09 A |  | 100% |  |  |  |  |  | 72h | 72h |  |
| 99 | 4.2.1.1.1 | SDK_4.4_ISO_Data_Type_Support_within_Web_UI_Design_Document.docx |  | 2d | 2010-07-06 A | 2010-07-07 A | 95 | 100% |  |  |  |  | Dan | 16h | 16h | 5,6,8 |
| 100 | 4.2.1.1.2 | SDK 4.4_ISO_Data_Type_Support.EAP |  | 2d | 2010-07-08 A | 2010-07-09 A | 99 | 100% |  |  |  |  | Dan | 16h | 16h | 1,2 |
| 101 | 4.2.1.1.3 | RESTfulAPI_Design.docx |  | 4d | 2010-07-06 A | 2010-07-09 A | 95 | 100% |  |  |  |  | Santhosh | 32h | 32h |  |
| 102 | 4.2.1.1.4 | Using JAXB with ISO 21090 data types.doc |  | 1d | 2010-07-08 A | 2010-07-08 A |  | 100% |  |  |  | start no earlier than 2010-07-08 | Prasad | 8h | 8h |  |
| 103 | 4.2.1.2 | caGrid code freeze | milestone | 0d | 2010-07-06 | 2010-07-06 |  |  |  | 75d | 0d | start no earlier than 2010-07-06 |  |  |  |  |
| 104 | 4.2.1.3 | caGrid 1.4 integration | milestone | 0d | 2010-07-06 | 2010-07-06 | 103 |  |  | 75d | 17d |  |  |  |  |  |
| 105 | 4.2.1.4 | Meet with SI regarding metadata repository integration |  | 10d | 2010-07-06 | 2010-07-19 |  |  |  | 63d | 9d | start no earlier than 2010-06-28 | Greg; Satish | 160h |  | 11,12 |
| 106 | 4.2.1.5 | Conversion of RESTful query to ISO object |  | 5d | 2010-07-12 A | 2010-07-16 | 101 | 60% | 2d | 61d | 0d |  | Santhosh | 40h | 24h | 2,8 |
| 107 | 4.2.1.6 | Query Translator ISO object to HQL Query |  | 5d | 2010-07-19 A | 2010-07-23 | 106 | 60% | 2d | 58d | 0d |  | Santhosh | 40h | 24h | 2,3 |
| 108 | 4.2.1.7 | JUnit test cases (query/object conversions) |  | 3d | 2010-07-26 | 2010-07-28 | 106, 107 |  |  | 58d | 0d | start no earlier than 2010-07-21 | Santhosh | 24h |  | 2,3 |
| 109 | 4.2.1.8 | Known issues from 4.3 |  | 4d | 2010-07-26 | 2010-07-29 | 158 |  |  | 59d |  | start no earlier than 2010-06-28 | Prasad | 32h |  | 10 |
| 110 | 4.2.1.9 | Modify / unit test Workbench changes to remove API enabling restrictions |  | 1d | 2010-07-12 A | 2010-07-12 A | 98 | 100% |  |  |  |  | Dan | 8h | 8h | 4,5 |
| 111 | 4.2.1.10 | Modify / unit test build scripts to remove API enabling restrictions |  | 1d | 2010-07-13 A | 2010-07-13 A | 110 | 100% |  |  |  |  | Dan | 8h | 8h | 4,5 |
| 112 | 4.2.1.11 | Support Search Criteria input from HTML for all supported ISO data types |  | 9d | 2010-07-14 A | 2010-07-26 | 111 | 40% | 5.4d | 60d | 2d |  | Dan | 72h | 28.8h | 4,5 |
| 113 | 4.2.1.12 | Sprint C1 Integration |  | 2d | 2010-07-29 | 2010-07-30 | 104, 112, 108 |  |  | 58d |  | start no earlier than 2010-06-15 | Vijay; Santhosh; Dan | 48h |  |  |

| ID | WBS | Task | Type | Duration | Start | Finish | Predecessors | Total slack | Free slack | Constraint | Resources | Work | Text1 |
| --- | --- | --- | --- | --- | --- | --- | --- | --- | --- | --- | --- | --- | --- |
| 114 | 4.2.2 | **C2 - Sprint 3** |  | 20d | 2010-08-02 | 2010-08-27 |  | 38d |  | start no earlier than 2010-08-02 |  | 376h |  |
| 115 | 4.2.2.1 | Metada repository integration (MMS) | milestone | 0d | 2010-08-02 | 2010-08-02 | 105 | 54d | 16d | start no earlier than 2010-06-28 |  |  | 11,12 |
| 116 | 4.2.2.2 | Class Cache Map for Searchable fields for GUI |  | 7d | 2010-08-02 | 2010-08-10 |  | 45d | 7d | start no earlier than 2010-07-21 | Santhosh | 56h |  |
| 117 | 4.2.2.3 | XSLT for GETHTML and GETJSON |  | 7d | 2010-08-11 | 2010-08-19 |  | 38d | 0d | start no earlier than 2010-08-11 | Santhosh | 56h | 2,3 |
| 118 | 4.2.2.4 | Junit test cases (class cache, XSLT) |  | 2d | 2010-08-20 | 2010-08-23 | 116, 117 | 38d | 0d | start no earlier than 2010-08-20 | Santhosh | 16h | 2,3 |
| 119 | 4.2.2.5 | Integrate metadata to only selectively generate ISO data type input fields that are actually mapped to the database |  | 3d | 2010-08-02 | 2010-08-04 |  | 44d | 0d | start no earlier than 2010-07-21 | Dan | 24h |  |
| 120 | 4.2.2.6 | Integrate submitted ISO data type criteria with existing search functionality |  | 3d | 2010-08-05 | 2010-08-09 | 119 | 44d | 0d | start no earlier than 2010-07-21 | Dan | 24h | 2,3,4,5 |
| 121 | 4.2.2.7 | Implement and unit test client-side form validation |  | 8d | 2010-08-10 | 2010-08-19 | 120 | 44d |  | start no earlier than 2010-07-21 | Dan | 64h | 2,3 |
| 122 | 4.2.2.8 | Finalized design documents to QA | milestone | 0d | 2010-08-09 | 2010-08-09 |  | 53d |  | start no earlier than 2010-08-09 |  |  |  |
| 123 | 4.2.2.9 | Test Plan |  | 5d | 2010-08-06 | 2010-08-13 | 124FF | 49d |  |  | Vijay | 40h |  |
| 124 | 4.2.2.10 | Test Plan Due | milestone | 0d | 2010-08-13 | 2010-08-13 |  | 49d | 0d | start no earlier than 2010-08-13 |  |  |  |
| 125 | 4.2.2.11 | Sprint C2 Integration |  | 4d | 2010-08-24 | 2010-08-27 | 115, 118 | 38d |  | start no earlier than 2010-07-26 | Vijay; Santhosh; Dan | 96h |  |
| 126 | 4.2.3 | **C3 - Sprint 4 (QA)** |  | 19d | 2010-08-30 | 2010-09-24 |  | 19d |  | start no earlier than 2010-08-30 |  | 408h |  |
| 127 | 4.2.3.1 | Code base available for QA | milestone | 0d | 2010-08-30 | 2010-08-30 |  | 38d |  | start no earlier than 2010-06-23 |  |  |  |
| 128 | 4.2.3.2 | QA Support |  | 19d | 2010-08-30 | 2010-09-24 |  | 19d |  | start no earlier than 2010-06-15 | All | 152h | 1-6,8 |
| 129 | 4.2.3.3 | **Update documentation** |  | 7d | 2010-09-01 | 2010-09-10 |  | 29d |  |  |  | 96h |  |
| 130 | 4.2.3.3.1 | SDK release notes |  | 2d | 2010-09-01 | 2010-09-02 |  | 34d |  | start no earlier than 2010-09-01 | Prasad; Santhosh | 32h | 2,8 |
| 131 | 4.2.3.3.2 | Workbench release notes |  | 2d | 2010-09-03 | 2010-09-07 |  | 32d |  | start no earlier than 2010-09-03 | Prasad; Santhosh | 32h | 2,8 |
| 132 | 4.2.3.3.3 | SDK:Example/ISOExample readme |  | 1d | 2010-09-09 | 2010-09-09 |  | 30d |  | start no earlier than 2010-09-09 | Prasad; Santhosh | 16h | 1,2,8 |
| 133 | 4.2.3.3.4 | Workbench readme |  | 1d | 2010-09-10 | 2010-09-10 |  | 29d |  | start no earlier than 2010-09-10 | Prasad; Santhosh | 16h | 4,5 |
| 134 | 4.2.3.4 | **Update guides** |  | 16d | 2010-08-30 | 2010-09-21 |  | 22d |  |  |  | 160h |  |
| 135 | 4.2.3.4.1 | Workbench Users Guide |  | 4d | 2010-08-30 | 2010-09-02 |  | 34d |  | start no earlier than 2010-06-21 | Dan | 32h | 2,4,5,8 |
| 136 | 4.2.3.4.2 | SDK Programmers Guide |  | 4d | 2010-09-03 | 2010-09-09 |  | 30d |  | start no earlier than 2010-09-03 | Dan | 32h | 2,4,5,8 |
| 137 | 4.2.3.4.3 | UML Modeling Guide |  | 4d | 2010-09-09 | 2010-09-14 |  | 27d |  | start no earlier than 2010-09-09 | Dan | 32h | 2,4,5,8 |
| 138 | 4.2.3.4.4 | Object Relational Mapping Guide |  | 4d | 2010-09-15 | 2010-09-20 |  | 23d |  | start no earlier than 2010-09-15 | Dan | 32h | 2,4,5,8 |
| 139 | 4.2.3.4.5 | How To Use SDK Guide |  | 4d | 2010-09-16 | 2010-09-21 |  | 22d |  | start no earlier than 2010-09-16 | Dan | 32h | 2,4,5,8 |
| 140 | 4.2.3.5 | Final product documentation to QA | milestone | 0d | 2010-09-20 | 2010-09-20 |  | 24d |  | start no earlier than 2010-09-20 |  |  |  |
| 141 | 4.2.3.6 | Download Center updates |  | 2d | 2010-09-23 | 2010-09-24 |  | 19d |  | finish no earlier than 2010-09-24 |  |  | 1-6,8 |
| 142 | 4.2.3.7 | QA Complete | milestone | 0d | 2010-09-24 | 2010-09-24 |  | 20d |  | start no earlier than 2010-09-24 |  |  |  |

| ID | WBS | Task | Type | Duration | Start | Finish | Predecessors | Total slack | Free slack | Constraint | Resources | Work | Text1 |
| --- | --- | --- | --- | --- | --- | --- | --- | --- | --- | --- | --- | --- | --- |
| 143 | 4.3 | **Transition** |  | 11d | 2010-09-27 | 2010-10-11 |  | 8d |  |  |  |  |  |
| 144 | 4.3.1 | User Acceptance Testing |  | 5d | 2010-09-27 | 2010-10-01 |  | 14d |  | start no earlier than 2010-09-27 |  |  |  |
| 145 | 4.3.2 | (Test Package) |  | 1d | 2010-10-04 | 2010-10-04 |  | 13d |  | start no earlier than 2010-10-04 |  |  |  |
| 146 | 4.3.3 | SDK 4.4 Release |  | 1d | 2010-10-05 | 2010-10-05 |  | 8d | 0d | start no earlier than 2010-10-05 |  |  |  |
| 147 | 4.3.4 | Software Code Base (4.4) |  | 1d | 2010-10-11 | 2010-10-11 | 146FS+3d | 8d |  | start no earlier than 2010-06-15 |  |  |  |
| 148 | 4.3.5 | Deployment Package (4.4) |  | 1d | 2010-10-11 | 2010-10-11 | 146FS+3d | 8d |  | start no earlier than 2010-06-15 |  |  |  |
| 150 | 5 | **Tool enhancement prototypes** |  | 78d? | 2010-06-21 | 2010-10-08 |  | 9d |  |  |  | 792h | 8,9 |
| 151 | 5.1 | **Elaboration** |  | 10d | 2010-06-21 | 2010-07-02 |  | 54d |  |  |  | 280h |  |
| 152 | 5.1.1 | **E1 - Sprint 1** |  | 10d | 2010-06-21 | 2010-07-02 |  | 54d |  |  |  | 280h |  |
| 153 | 5.1.1.1 | Top-down analysis paper - research and rough cut |  | 10d | 2010-06-21 | 2010-07-02 |  | 59d | 0d | start no earlier than 2010-06-21 | Satish [25%]; Prasad | 100h |  |
| 154 | 5.1.1.2 | Bottom-up analysis paper - research and rough cut |  | 10d | 2010-06-21 | 2010-07-02 |  | 54d | 0d | start no earlier than 2010-06-21 | Bediako; Satish [25%] | 100h |  |
| 155 | 5.1.1.3 | Eclipse service creation wizard research |  | 10d | 2010-06-21 | 2010-07-02 |  | 38d | 0d | start no earlier than 2010-06-21 | John | 80h |  |
| 156 | 5.2 | **Construction** |  | 40d? | 2010-07-06 | 2010-08-30 |  | 37d |  |  |  | 512h |  |
| 157 | 5.2.1 | **C1- Sprint 2** |  | 23d | 2010-07-06 | 2010-08-05 |  | 54d |  | start no earlier than 2010-07-06 |  | 512h |  |
| 158 | 5.2.1.1 | **Top-down analysis paper** |  | 14d | 2010-07-06 | 2010-07-23 | 153 | 59d | 0d |  |  | 112h |  |
| 159 | 5.2.1.1.1 | Updates, reviews and refinements |  | 14d | 2010-07-06 | 2010-07-23 |  | 59d | 0d |  | Prasad | 112h |  |
| 160 | 5.2.1.1.2 | Next Generation caCORE Infrastructure (document) | milestone | 0d | 2010-07-23 | 2010-07-23 | 159 | 59d |  |  | Prasad |  |  |
| 161 | 5.2.1.1.3 | caCORE Infrastructure - Next Generation Tooling (presentation) | milestone | 0d | 2010-07-23 | 2010-07-23 | 159 | 59d |  |  | Prasad |  |  |
| 162 | 5.2.1.2 | **Bottom-up analysis paper** |  | 14d | 2010-07-06 | 2010-07-23 | 154 | 54d | 0d |  |  | 112h |  |
| 163 | 5.2.1.2.1 | Updates, reviews and refinements |  | 14d | 2010-07-06 | 2010-07-23 |  | 34d | 0d |  | Bediako | 112h |  |
| 164 | 5.2.1.2.2 | Next Generation SDK (document) | milestone | 0d | 2010-07-23 | 2010-07-23 | 163 | 54d |  | start no earlier than 2010-07-21 | Bediako |  |  |
| 165 | 5.2.1.2.3 | Future SDK - Technical Treatment (presentation) | milestone | 0d | 2010-07-23 | 2010-07-23 | 163 | 34d |  | start no earlier than 2010-07-21 | Bediako |  |  |
| 166 | 5.2.1.3 | **Develop enhancement/protoype plan** |  | 8d | 2010-07-21 | 2010-07-30 |  | 58d |  |  |  | 64h |  |
| 167 | 5.2.1.3.1 | Develop task/work plan for enhancements |  | 2d | 2010-07-21 | 2010-07-22 |  | 38d | 0d | start no earlier than 2010-07-21 | Satish | 16h |  |
| 168 | 5.2.1.3.2 | Create workflows |  | 2d | 2010-07-23 | 2010-07-26 | 167 | 38d | 0d | start no earlier than 2010-07-21 | Satish | 16h |  |
| 169 | 5.2.1.3.3 | Design and design documentation |  | 4d | 2010-07-27 | 2010-07-30 | 168 | 38d |  | start no earlier than 2010-07-21 | Satish | 32h |  |
| 170 | 5.2.1.4 | Eclipse service creation wizard - initial prototype |  | 19d | 2010-07-06 | 2010-07-30 | 155 | 58d |  | start no earlier than 2010-06-21 | John | 152h |  |
| 171 | 5.2.1.5 | Eclipse EMF prototype research |  | 9d | 2010-07-26 | 2010-08-05 | 162 | 54d |  | start no earlier than 2010-06-15 | Bediako | 72h |  |

| ID | WBS | Task | Type | Duration | Start | Finish | Total slack | Constraint | Resources | Work | Text1 |
| --- | --- | --- | --- | --- | --- | --- | --- | --- | --- | --- | --- |
| 172 | 5.2.2 | **C2 - Sprint 3** |  | 1d? | 2010-08-02 | 2010-08-02 | 57d | start no earlier than 2010-08-02 |  |  |  |
| 173 | 5.2.2.1 | Implement XMI/DDL/UML to ECORE |  | 1d? | 2010-08-02 | 2010-08-02 | 57d | start no earlier than 2010-07-21 |  |  |  |
| 174 | 5.2.2.2 | Implement workflows |  | 1d? | 2010-08-02 | 2010-08-02 | 57d | start no earlier than 2010-07-21 |  |  |  |
| 175 | 5.2.2.3 | Reference service implementation |  | 1d? | 2010-08-02 | 2010-08-02 | 57d | start no earlier than 2010-07-21 |  |  |  |
| 176 | 5.2.3 | **C3 - Sprint 4** |  | 1d? | 2010-08-30 | 2010-08-30 | 37d | start no earlier than 2010-08-30 |  |  |  |
| 177 | 5.2.3.1 | Scripts |  | 1d? | 2010-08-30 | 2010-08-30 | 37d | start no earlier than 2010-07-21 |  |  |  |
| 178 | 5.2.3.2 | Integration |  | 1d? | 2010-08-30 | 2010-08-30 | 37d | start no earlier than 2010-07-21 |  |  |  |
| 179 | 5.2.3.3 | Demo |  | 1d? | 2010-08-30 | 2010-08-30 | 37d | start no earlier than 2010-07-21 |  |  |  |
| 180 | 5.2.3.4 | Documentation |  | 1d? | 2010-08-30 | 2010-08-30 | 37d | start no earlier than 2010-06-15 |  |  |  |
| 181 | 5.3 | **Transition** |  | 10d | 2010-09-27 | 2010-10-08 | 9d | start no earlier than 2010-09-27 |  |  |  |
| 182 | 5.3.1 | TBD |  | 10d | 2010-09-27 | 2010-10-08 | 9d | start no earlier than 2010-06-28 |  |  |  |
| 184 | 6 | User support - ongoing |  | 93d | 2010-05-28 | 2010-10-08 | 9d | start no earlier than 2010-05-28 | All | 744h | 1,10 |
| 185 | 7 | Training development support |  | 10d? | 2010-08-02 | 2010-08-13 | 48d | start no earlier than 2010-08-02 | Satish | 80h | 10 |
| 187 | 8 | **Major events affecting availability** |  | 75d | 2010-06-01 | 2010-09-15 | 26d |  |  | 168h |  |
| 188 | 8.1 | VCDE-Architecture Face To Face & Prep |  | 4d | 2010-06-01 | 2010-06-04 | 97d | start no earlier than 2010-06-01 | Bediako; Satish; Prasad; Vijay | 128h |  |
| 189 | 8.2 | caBIG Annual Meeting & Prep |  | 5d | 2010-09-09 | 2010-09-15 | 26d | start no earlier than 2010-09-09 | All | 40h |  |
| 191 | 9 | **Vacation** |  | 24d | 2010-07-20 | 2010-08-20 | 19d |  |  | 40h |  |
| 192 | 9.1 | Greg |  | 1d | 2010-07-20 | 2010-07-20 | 66d | start no earlier than 2010-07-20 |  |  |  |
| 193 | 9.2 | Greg |  | 5d | 2010-08-09 | 2010-08-13 | 48d | start no earlier than 2010-08-09 |  |  |  |
| 194 | 9.3 | Vijay |  | 5d | 2010-08-16 | 2010-08-20 | 0d | must start on 2010-08-16 | Vijay | 40h |  |
| 196 | 10 | Contract deliverables are in blue | milestone | 0d | 2010-05-20 | 2010-05-20 | 108d |  |  |  |  |
| 197 | 11 | Non-contract deliverables are in maroon | milestone | 0d | 2010-07-13 | 2010-07-13 | 72d | start no earlier than 2010-07-13 |  |  |  |
| 198 | 12 | Key dates/tasks for interactions with external teams are in green | milestone | 0d | 2010-06-23 | 2010-06-23 | 85d | start no earlier than 2010-06-23 |  |  |  |
| 201 | 13 | **Reference to objectives** |  | 1d? | 2010-07-21 | 2010-07-21 | 65d |  |  |  |  |
| 202 | 13.1 | 1) Maintenance of and technical support for the ISO 21090 Java Library |  | 1d? | 2010-07-21 | 2010-07-21 | 65d | start no earlier than 2010-07-21 |  |  |  |
| 203 | 13.2 | 2) caCORE SDK support for new data types |  | 1d? | 2010-07-21 | 2010-07-21 | 65d | start no earlier than 2010-07-21 |  |  |  |
| 204 | 13.3 | 3) Provide querying of new data types via Java API, remote API, RESTful API, and caGrid service |  | 1d? | 2010-07-21 | 2010-07-21 | 65d | start no earlier than 2010-07-21 |  |  |  |
| 205 | 13.4 | 4) Provide a solution for the SDK web interface to support query building for ISO 21090 data types. Enhance the QBE translator and integrate with the CQL query translator to support new data types. |  | 1d? | 2010-07-21 | 2010-07-21 | 65d | start no earlier than 2010-07-21 |  |  |  |
| 206 | 13.5 | 5) Provide an easy user interface for users to navigate the domain model browser. From the domain model browser, users should be able to query the system using the query builder. |  | 1d? | 2010-07-21 | 2010-07-21 | 65d | start no earlier than 2010-07-21 |  |  |  |
| 207 | 13.6 | 6) Support caGrid and Introduce with regard to CQL changes and data types used by COPPA/PODS |  | 1d? | 2010-07-21 | 2010-07-21 | 65d | start no earlier than 2010-07-21 |  |  |  |
| 208 | 13.7 | 7) Extension of the ISO 21090 library to support operations on data types |  | 1d? | 2010-07-21 | 2010-07-21 | 65d | start no earlier than 2010-07-21 |  |  |  |
| 209 | 13.8 | 8) Maintain, enhance, and/or extend the existing tools to support rapid development of services that are compatible with the caBIG infrastructure and allow services to support data sharing securely and efficiently |  | 1d? | 2010-07-21 | 2010-07-21 | 65d | start no earlier than 2010-07-21 |  |  |  |
| 210 | 13.9 | 9) Evaluate existing tools for their ability to support service development in BIG HEAS, enhance existing tools, and develop new tools to support the emerging business needs |  | 1d? | 2010-07-21 | 2010-07-21 | 65d | start no earlier than 2010-07-21 |  |  |  |
| 211 | 13.10 | 10) Full life cycle operational and user support of SDK, CSM, and CLM |  | 1d? | 2010-07-21 | 2010-07-21 | 65d | start no earlier than 2010-07-21 |  |  |  |
| 212 | 13.11 | 11) Enhance caGrid’s Metadata Model Service (MMS) to read the metadata from the target semantic infrastructure... |  | 1d? | 2010-07-21 | 2010-07-21 | 65d | start no earlier than 2010-07-21 |  |  |  |
| 213 | 13.12 | 12) Enhance Data Service infrastructure to support new MMS |  | 1d? | 2010-07-21 | 2010-07-21 | 65d | start no earlier than 2010-07-21 |  |  |  |
